# PinMyHelp

Schedule from ProjectLibre, 2018-03-06 to 2018-07-13, 6 hours a day.

## Calendars

- Standard: Mon-Fri 08:00-12:00, 13:00-17:00; Sat-Sun off.

## Resources

| Resource | Rate |
| --- | --- |
| Unassigned |  |
| Gerente | 41 |
| Adriano Almeida | 41 |
| Analista | 22 |
| Isabella Sakis | 22 |
| Rhauani Fazul |  |
| Roger Couto |  |
| DBA | 25 |
| Adriano Almeida |  |
| Marinara Rübenich | 25 |
| Programador | 20 |
| Adriano Almeida |  |
| Isabella Sakis |  |
| Marinara Rübenich |  |
| Rhauani Fazul | 20 |
| Roger Couto | 20 |
| Testador | 19.5 |
| Isabella Sakis | 19.5 |
| Marinara Rübenich |  |
| Rhauani Fazul |  |
| Suporte | 13.5 |
| Adriano Almeida | 13.5 |
| Roger Couto |  |

## Schedule

| ID | WBS | Task | Duration | Start | Finish | Predecessors | Baseline start | Baseline finish | Total slack | Constraint | Resources |
| --- | --- | --- | --- | --- | --- | --- | --- | --- | --- | --- | --- |
| 1 | 1 | **Projeto de desenvolvimento: PinMyHelp** | 125.33d? | 2018-03-06 | 2018-07-13 |  | 2018-03-06 | 2018-07-13 |  |  |  |
| 2 | 1.1 | **Preparação** | 8d | 2018-03-06 | 2018-03-13 |  | 2018-03-06 | 2018-03-13 | 1844.44d |  |  |
| 3 | 1.1.1 | Elaboração e discussão de projeto | 8d | 2018-03-06 | 2018-03-13 |  | 2018-03-06 | 2018-03-13 | 1844.44d | start no earlier than 2018-03-06 | Adriano Almeida; Isabella Sakis; Rhauani Fazul; Roger Couto; Marinara Rübenich |
| 4 | 1.2 | **Planejamento** | 9d | 2018-03-14 | 2018-03-22 | 3 | 2018-03-14 | 2018-03-22 | 1844.44d |  |  |
| 5 | 1.2.1 | Documento de Visão | 8d | 2018-03-14 | 2018-03-21 |  | 2018-03-14 | 2018-03-21 | 1844.44d |  | Adriano Almeida |
| 6 | 1.2.2 | Planejar Gerenciamento do Projeto | 6d | 2018-03-14 | 2018-03-20 |  | 2018-03-14 | 2018-03-20 | 2244.44d |  | Adriano Almeida |
| 7 | 1.2.3 | Reportar status | 1d | 2018-03-22 | 2018-03-22 | 5 | 2018-03-22 | 2018-03-22 | 1844.44d | start no earlier than 2018-03-21 | Adriano Almeida |
| 8 | 1.3 | **Requisitos** | 24.67d | 2018-03-22 | 2018-04-18 | 4 | 2018-03-22 | 2018-04-18 | 1288.89d |  |  |
| 9 | 1.3.1 | Realizar análise das necessidades - Levantamento de requisitos | 7d | 2018-03-22 | 2018-03-29 |  | 2018-03-22 | 2018-03-29 | 1844.44d |  | Adriano Almeida; Roger Couto |
| 10 | 1.3.2 | Elicitar requisitos - Elaborar DRS | 10d | 2018-03-30 | 2018-04-10 | 9 | 2018-03-30 | 2018-04-10 | 1844.44d |  | Isabella Sakis; Rhauani Fazul |
| 11 | 1.3.3 | Elaborar Modelo de Casos de Uso | 1.5d | 2018-04-12 | 2018-04-13 | 10 | 2018-04-12 | 2018-04-13 | 1488.89d | start no earlier than 2018-04-12 | Roger Couto; Marinara Rübenich |
| 12 | 1.3.4 | Validar os requisitos | 2d | 2018-04-16 | 2018-04-18 | 11 | 2018-04-16 | 2018-04-18 | 1288.89d | start no earlier than 2018-04-16 | Adriano Almeida; Isabella Sakis; Rhauani Fazul |
| 13 | 1.4 | **Análise e projeto** | 22.5d? | 2018-04-18 | 2018-05-11 | 12 | 2018-04-18 | 2018-05-11 | 4755.56d |  |  |
| 14 | 1.4.1 | Definir a arquiteutra | 1.5d | 2018-04-18 | 2018-04-19 |  | 2018-04-18 | 2018-04-19 | 1288.89d |  | Adriano Almeida; Isabella Sakis |
| 15 | 1.4.2 | Levantamento de ferramentas de apoio | 1.5d | 2018-04-19 | 2018-04-20 | 14 | 2018-04-19 | 2018-04-20 | 7288.89d |  | Adriano Almeida; Roger Couto |
| 16 | 1.4.3 | Definir padrão de documentação | 0.5d | 2018-04-19 | 2018-04-19 | 14 | 2018-04-19 | 2018-04-19 | 3088.89d |  | Marinara Rübenich |
| 17 | 1.4.4 | Configuração Repositório Remoto | 0.5d | 2018-04-20 | 2018-04-20 | 15 | 2018-04-20 | 2018-04-20 | 7288.89d |  | Rhauani Fazul |
| 18 | 1.4.5 | Elaborar modelo de classes | 4d | 2018-04-19 | 2018-04-24 | 14 | 2018-04-19 | 2018-04-24 | 1288.89d |  | Rhauani Fazul; Roger Couto |
| 19 | 1.4.6 | Elaborar modelo de sequência | 7d | 2018-04-24 | 2018-05-01 | 18 | 2018-04-24 | 2018-05-01 | 1288.89d |  | Isabella Sakis; Rhauani Fazul; Roger Couto |
| 20 | 1.4.7 | Elaborar modelo de Estados | 2d | 2018-05-01 | 2018-05-03 | 19 | 2018-05-01 | 2018-05-03 | 1422.22d |  | Roger Couto |
| 21 | 1.4.8 | Elaborar modelo de Atividades | 3d | 2018-05-01 | 2018-05-03 | 19 | 2018-05-01 | 2018-05-03 | 1288.89d |  | Isabella Sakis |
| 22 | 1.4.9 | Elaborar modelo de Implementação | 3d | 2018-05-03 | 2018-05-08 | 21 | 2018-05-03 | 2018-05-08 | 4955.56d |  | Marinara Rübenich |
| 23 | 1.4.10 | Elaborar modelo de Implantação | 2.5d | 2018-05-08 | 2018-05-09 | 22 | 2018-05-08 | 2018-05-09 | 4955.56d |  | Rhauani Fazul |
| 24 | 1.4.11 | Elaborar modelo Conceitual (ER) - Banco de Dados | 4d | 2018-04-19 | 2018-04-24 | 14 | 2018-04-19 | 2018-04-24 | 2622.22d |  | Adriano Almeida; Marinara Rübenich |
| 25 | 1.4.12 | Validar a arquitetura | 2d | 2018-05-03 | 2018-05-07 | 16, 20, 21, 24 | 2018-05-03 | 2018-05-07 | 1288.89d |  | Adriano Almeida; Rhauani Fazul |

| ID | WBS | Task | Duration | Start | Finish | Predecessors | Baseline start | Baseline finish | Total slack | Resources |
| --- | --- | --- | --- | --- | --- | --- | --- | --- | --- | --- |
| 26 | 1.4.13 | **Prototipação** | 5d? | 2018-05-07 | 2018-05-11 | 25 | 2018-05-07 | 2018-05-11 | 1288.89d |  |
| 27 | 1.4.13.1 | Protótipo inicial | 2d | 2018-05-07 | 2018-05-08 |  | 2018-05-07 | 2018-05-08 | 1288.89d | Isabella Sakis; Rhauani Fazul |
| 28 | 1.4.13.2 | Levantamento de Técnicas de IHC | 1d? | 2018-05-07 | 2018-05-08 |  | 2018-05-07 | 2018-05-08 | 1422.22d | Roger Couto |
| 29 | 1.4.13.3 | Protótipo de interfaces | 3d | 2018-05-08 | 2018-05-11 | 27, 28 | 2018-05-08 | 2018-05-11 | 1288.89d | Adriano Almeida; Marinara Rübenich |
| 30 | 1.5 | **Implementação** | 43d | 2018-04-24 | 2018-06-07 |  | 2018-04-24 | 2018-06-07 | 1555.56d |  |
| 31 | 1.5.1 | Implementar Banco de Dados | 6d | 2018-04-24 | 2018-04-30 | 24 | 2018-04-24 | 2018-04-30 | 2755.56d | Isabella Sakis; Rhauani Fazul; Roger Couto |
| 32 | 1.5.2 | Implementar caso de uso "Realizar Cadastro" | 3d | 2018-05-11 | 2018-05-15 | 29, 31 | 2018-05-11 | 2018-05-15 | 1288.89d | Adriano Almeida; Roger Couto |
| 33 | 1.5.3 | Implementar caso de uso "Solicitar Ajuda" | 6d | 2018-05-15 | 2018-05-21 | 32 | 2018-05-15 | 2018-05-21 | 1288.89d | Isabella Sakis; Marinara Rübenich |
| 34 | 1.5.4 | Implementar caso de uso "Oferecer Ajuda" | 5d | 2018-05-21 | 2018-05-25 | 33 | 2018-05-21 | 2018-05-25 | 1288.89d | Rhauani Fazul; Roger Couto |
| 35 | 1.5.5 | Implementar caso de uso "Manter Ajuda" | 6d | 2018-05-21 | 2018-05-28 | 33 | 2018-05-21 | 2018-05-28 | 2222.22d | Adriano Almeida; Marinara Rübenich |
| 36 | 1.5.6 | Implementar caso de uso "Dar Feedback" | 8d | 2018-05-25 | 2018-06-04 | 33, 34 | 2018-05-25 | 2018-06-04 | 1288.89d | Adriano Almeida; Rhauani Fazul |
| 37 | 1.5.7 | Implementar caso de uso "Validar Cadastro" | 2d | 2018-05-15 | 2018-05-16 | 32 | 2018-05-15 | 2018-05-16 | 3555.56d | Adriano Almeida; Roger Couto |
| 38 | 1.5.8 | Implementar caso de uso "Manter Usuários" | 5.5d | 2018-05-16 | 2018-05-22 | 37 | 2018-05-16 | 2018-05-22 | 3622.22d | Rhauani Fazul; Marinara Rübenich |
| 39 | 1.5.9 | Implementar caso de uso "Gerar Relatórios" | 4d | 2018-06-04 | 2018-06-07 | 34, 35, 36, 37 | 2018-06-04 | 2018-06-07 | 1288.89d | Adriano Almeida; Isabella Sakis |
| 40 | 1.5.10 | Implementar caso de uso "Contatar adiministrador por falha de segurança ou do S[istema" | 4d | 2018-05-16 | 2018-05-21 | 37 | 2018-05-16 | 2018-05-21 | 3822.22d | Roger Couto; Marinara Rübenich |
| 41 | 1.5.11 | Ajustar detalhes da configuração Web | 8.5d | 2018-04-30 | 2018-05-09 | 31 | 2018-04-30 | 2018-05-09 | 5088.89d | Adriano Almeida; Rhauani Fazul |
| 42 | 1.6 | **Testar** | 36d | 2018-05-11 | 2018-06-19 | 13 | 2018-05-11 | 2018-06-19 | 1288.89d |  |
| 43 | 1.6.1 | **Teste de integração whitebox** | 30d | 2018-05-11 | 2018-06-12 | 13 | 2018-05-11 | 2018-06-12 | 1288.89d |  |
| 44 | 1.6.1.1 | Testar caso de uso "Realizar Cadastro" | 1d | 2018-05-15 | 2018-05-16 | 32 | 2018-05-15 | 2018-05-16 | 4755.56d | Marinara Rübenich |
| 45 | 1.6.1.2 | Testar caso de uso "Solicitar Ajuda" | 3d | 2018-05-21 | 2018-05-24 | 33 | 2018-05-21 | 2018-05-24 | 3688.89d | Isabella Sakis; Rhauani Fazul |
| 46 | 1.6.1.3 | Testar caso de uso "Oferecer Ajuda' | 3d | 2018-05-25 | 2018-05-29 | 34 | 2018-05-25 | 2018-05-29 | 3022.22d | Marinara Rübenich; Isabella Sakis |
| 47 | 1.6.1.4 | Testar caso de uso "Manter Ajuda" | 3d | 2018-05-28 | 2018-05-30 | 35 | 2018-05-28 | 2018-05-30 | 2888.89d | Rhauani Fazul |
| 48 | 1.6.1.5 | Testar caso de uso "Dar Feedback" | 4d | 2018-06-04 | 2018-06-07 | 36 | 2018-06-04 | 2018-06-07 | 1822.22d | Rhauani Fazul; Marinara Rübenich |
| 49 | 1.6.1.6 | Testar caso de uso "Validar Cadastro" | 1d | 2018-05-16 | 2018-05-17 | 37 | 2018-05-16 | 2018-05-17 | 4488.89d | Isabella Sakis |
| 50 | 1.6.1.7 | Testar caso de uso "Manter Usuários" | 2d | 2018-05-23 | 2018-05-24 | 38 | 2018-05-23 | 2018-05-24 | 3622.22d | Marinara Rübenich |
| 51 | 1.6.1.8 | Testar caso de uso "Gerar Relatórios" | 4d | 2018-06-07 | 2018-06-12 | 39 | 2018-06-07 | 2018-06-12 | 1288.89d | Rhauani Fazul |
| 52 | 1.6.1.9 | Testar caso de uso "Contatar administrador por falha de segurança ou do Sistema" | 2d | 2018-05-21 | 2018-05-23 | 40 | 2018-05-21 | 2018-05-23 | 3822.22d | Isabella Sakis |
| 53 | 1.6.1.10 | Teste das ações via interfaces | 4d | 2018-05-11 | 2018-05-16 | 41 | 2018-05-11 | 2018-05-16 | 4755.56d | Marinara Rübenich; Rhauani Fazul |
| 54 | 1.6.2 | Teste de sistema blackbox | 6d | 2018-06-12 | 2018-06-19 | 43 | 2018-06-12 | 2018-06-19 | 1288.89d | Isabella Sakis; Marinara Rübenich; Rhauani Fazul |

| ID | WBS | Task | Duration | Start | Finish | Predecessors | Baseline start | Baseline finish | Constraint | Resources |
| --- | --- | --- | --- | --- | --- | --- | --- | --- | --- | --- |
| 55 | 1.7 | **Entrega** | 0.5d | 2018-06-28 | 2018-06-28 | 42 | 2018-06-28 | 2018-06-28 |  |  |
| 56 | 1.7.1 | Entrega do Sofware e documentação | 0.3d | 2018-06-28 | 2018-06-28 | 54 | 2018-06-28 | 2018-06-28 | start no earlier than 2018-06-28 | Adriano Almeida |
| 57 | 1.7.2 | Instalação do Servidor | 0.2d | 2018-06-28 | 2018-06-28 | 56 | 2018-06-28 | 2018-06-28 |  | Marinara Rübenich; Rhauani Fazul |
| 58 | 1.8 | **Manutenção** | 15d? | 2018-06-28 | 2018-07-13 | 55 | 2018-06-28 | 2018-07-13 |  |  |
| 59 | 1.8.1 | Manutenção do Sofware | 15d? | 2018-06-28 | 2018-07-13 |  | 2018-06-28 | 2018-07-13 |  | Adriano Almeida; Roger Couto |
